Schedule from a web Gantt chart, 2025-10-27 to 2027-05-31.
Saturdays and Sundays are off

## Schedule

| ID | WBS | Task | Duration | Start | Finish | Complete |
| --- | --- | --- | --- | --- | --- | --- |
| 2 | 1 | **财务核算** | 395d | 2025-10-27 | 2027-04-30 | 7% |
| 3 | 1.1 | **总账接口** | 235d | 2025-10-27 | 2026-09-18 | 52% |
| 4 | 1.1.1 | 接口方案确定及其他准备工作 | 5d | 2025-10-27 | 2025-10-31 | 100% |
| 5 | 1.1.2 | 确认外部系统与本系统档案之间的对照关系，并完成配置 | 5d | 2026-09-07 | 2026-09-11 | 80% |
| 6 | 1.1.3 | 配置单据模板（需要使用辅助、会计科目规则档案在编码字段维护档案类型，修改字段名称） | 5d | 2026-09-07 | 2026-09-11 | 50% |
| 7 | 1.1.4 | 确认科目单据规则，并完成配置 | 5d | 2026-09-07 | 2026-09-11 | 50% |
| 8 | 1.1.5 | 确认业务场景维护，并完成配置 | 5d | 2026-09-07 | 2026-09-11 | 50% |
| 9 | 1.1.6 | 下载数据（自动下载数据或者手动下载数据） | 5d | 2026-09-07 | 2026-09-11 | 90% |
| 10 | 1.1.7 | 生成凭证并核对凭证金额 | 5d | 2026-09-14 | 2026-09-18 |  |
| 11 | 1.1.8 | 联查凭证 | 5d | 2026-09-14 | 2026-09-18 |  |
| 12 | 1.2 | **全面预算** | 44d | 2026-09-01 | 2026-10-30 | 17% |
| 13 | 1.2.1 | 预算执行中预算号，预算调整单，预算执行单的编码规则确认 | 4d | 2026-09-01 | 2026-09-04 | 80% |
| 14 | 1.2.2 | 确认预算号执行权限 | 4d | 2026-09-01 | 2026-09-04 | 80% |
| 15 | 1.2.3 | 确认预算执行的控制规则 | 4d | 2026-09-01 | 2026-09-04 | 80% |
| 16 | 1.2.4 | 基础数据导入 | 4d | 2026-09-01 | 2026-09-04 | 80% |
| 17 | 1.2.5 | 预算填报 | 40d | 2026-09-07 | 2026-10-30 |  |
| 18 | 1.2.6 | 预算指标权限分配 | 5d | 2026-09-07 | 2026-09-11 |  |
| 19 | 1.2.7 | 预算日常调整调剂单据表单以及审批流程的确认 | 7d | 2026-10-08 | 2026-10-16 |  |
| 20 | 1.2.8 | 预算中期调整流程及表单的确认 | 7d | 2026-10-08 | 2026-10-16 |  |
| 21 | 1.3 | **报销管理** | 84d | 2026-09-07 | 2026-12-31 |  |
| 22 | 1.3.1 | 上线前功能测试 | 18d | 2026-09-07 | 2026-09-30 |  |
| 23 | 1.3.2 | 培训资料资料准备 | 3d | 2026-09-28 | 2026-09-30 |  |
| 24 | 1.3.3 | 上线培训 | 1d | 2026-10-08 | 2026-10-08 |  |
| 25 | 1.3.4 | 试运行及功能优化 | 60d | 2026-10-09 | 2026-12-31 |  |

| ID | WBS | Task | Duration | Start | Finish |
| --- | --- | --- | --- | --- | --- |
| 26 | 1.4 | **应收应付** | 84d | 2026-09-07 | 2026-12-31 |
| 27 | 1.4.1 | 上线前功能测试 | 18d | 2026-09-07 | 2026-09-30 |
| 28 | 1.4.2 | 培训资料资料准备 | 3d | 2026-09-28 | 2026-09-30 |
| 29 | 1.4.3 | 上线培训 | 1d | 2026-10-08 | 2026-10-08 |
| 30 | 1.4.4 | 试运行及功能优化 | 60d | 2026-10-09 | 2026-12-31 |
| 31 | 1.5 | **固定资产** | 84d | 2026-09-07 | 2026-12-31 |
| 32 | 1.5.1 | 上线前功能测试 | 5d | 2026-09-07 | 2026-09-11 |
| 33 | 1.5.2 | 培训资料资料准备 | 5d | 2026-09-14 | 2026-09-18 |
| 34 | 1.5.3 | 上线培训 | 1d | 2026-10-08 | 2026-10-08 |
| 35 | 1.5.4 | 导入9月最新资产卡片 | 2d | 2026-10-08 | 2026-10-09 |
| 36 | 1.5.5 | 系统上线使用并优化功能(按月计提折旧) | 59d | 2026-10-12 | 2026-12-31 |
| 37 | 1.5.6 | 调整、核实资产卡片数据 | 59d | 2026-10-12 | 2026-12-31 |
| 38 | 1.6 | **薪酬管理** | 40d | 2026-09-07 | 2026-10-30 |
| 39 | 1.6.1 | 调整自动凭证生成规则 | 18d | 2026-09-07 | 2026-09-30 |
| 40 | 1.6.2 | 核对自动凭证生成费用分摊准确性 | 17d | 2026-10-08 | 2026-10-30 |
| 41 | 1.7 | **资金管理** | 1d | 2026-10-08 | 2026-10-08 |
| 42 | 1.7.1 | 确认是否需要使用 | 1d | 2026-10-08 | 2026-10-08 |
| 43 | 1.8 | 成本管理 | 50d | 2027-02-22 | 2027-04-30 |
| 44 | 2 | **人力资源** | 84d | 2026-09-07 | 2026-12-31 |
| 45 | 2.1 | **考勤管理** | 35d | 2026-09-14 | 2026-10-30 |
| 46 | 2.1.1 | 康复科功能演示及优化 | 10d | 2026-09-14 | 2026-09-25 |
| 47 | 2.1.2 | 康复科线上排班功能试运行 | 23d | 2026-09-30 | 2026-10-30 |
| 48 | 2.1.3 | 确认【加班规则】，设计方案 | 7d | 2026-10-08 | 2026-10-16 |
| 49 | 2.1.4 | 确认【中夜班规则】【休假规则】【补贴规则】【考勤转换规则】【日历设置】，设计方案 | 7d | 2026-10-08 | 2026-10-16 |

| ID | WBS | Task | Duration | Start | Finish |
| --- | --- | --- | --- | --- | --- |
| 50 | 2.2 | **年度考核** | 40d | 2026-09-07 | 2026-10-30 |
| 51 | 2.2.1 | 考核项目设置 | 5d | 2026-09-07 | 2026-09-11 |
| 52 | 2.2.2 | 考核模板设置 | 5d | 2026-09-14 | 2026-09-18 |
| 53 | 2.2.3 | 考核流程设置 | 8d | 2026-09-21 | 2026-09-30 |
| 54 | 2.2.4 | 年度考核上线使用 | 17d | 2026-10-08 | 2026-10-30 |
| 55 | 2.3 | **请假管理** | 84d | 2026-09-07 | 2026-12-31 |
| 56 | 2.3.1 | 重新导入已请假记录 | 18d | 2026-09-07 | 2026-09-30 |
| 57 | 2.3.2 | 请假功能上线使用 | 1d | 2026-10-08 | 2026-10-08 |
| 58 | 2.3.3 | 上线试运行并优化功能 | 61d | 2026-10-08 | 2026-12-31 |
| 59 | 3 | **物资管理** | 84d | 2026-09-07 | 2026-12-31 |
| 60 | 3.1 | 需求调研 | 10d | 2026-09-07 | 2026-09-18 |
| 61 | 3.2 | 系统实施 | 30d | 2026-09-21 | 2026-10-30 |
| 62 | 3.3 | 上线试运行 | 44d | 2026-11-02 | 2026-12-31 |
| 63 | 4 | **决策分析** | 71d | 2027-02-22 | 2027-05-31 |
| 64 | 4.1 | 人力主题 | 71d | 2027-02-22 | 2027-05-31 |
| 65 | 4.2 | 财务主题 | 71d | 2027-02-22 | 2027-05-31 |
| 66 | 4.3 | 物资主题 | 71d | 2027-02-22 | 2027-05-31 |
